# pilottery-v1

Schedule from MS Project, 2015-08-28 to 2015-10-23.

## Calendars

- 标准: Mon-Fri 08:00-12:00, 13:00-17:00; Sat-Sun off. Exceptions (off unless hours are given): 2015-09-03 to 2015-09-05 (放假1), 2015-09-06 08:00-12:00, 13:00-17:00 (补休), 2015-10-01 to 2015-10-07 (国庆).

## Resources

| Resource |
| --- |
| 佟琳 |
| 陈震 |
| 董治国 |
| 王景隆 |
| 于元华 |
| 黄成元 |
| 贾海新 |
| 王清响 |
| 邵烈华及其他人员 |
| d |
| 其他陈震 |
| 小孔配合机器 |

## Schedule

| ID | WBS | Task | Duration | Start | Finish | Predecessors | Total slack | Free slack | Constraint | Resources | Work | Text1 |
| --- | --- | --- | --- | --- | --- | --- | --- | --- | --- | --- | --- | --- |
| 1 | 1 | 需求讲解 | 1d? | 2015-08-31 08:00 | 2015-08-31 17:00 |  | 2d | 0.5d | start no earlier than 2015-08-31 08:00 | 佟琳 | 8h | 31日完成主要部分；剩余兑奖，资金和手持终端相关部分。 |
| 2 | 2 | 开发计划编写 | 1.5d | 2015-08-31 08:00 | 2015-09-01 12:00 |  | 4d | 0d | start no earlier than 2015-08-31 08:00 | 董治国 | 12h | 9月1日完成，并于下午完成讲解 |
| 3 | 3 | **设计** | 11d? | 2015-09-01 13:00 | 2015-09-17 12:00 | 2 | 12d |  |  |  | 193.6h |  |
| 4 | 3.1 | **数据库设计** | 4d? | 2015-09-01 13:00 | 2015-09-08 12:00 |  | 4d |  |  |  | 32h |  |
| 5 | 3.1.1 | 数据库设计 | 2d? | 2015-09-01 13:00 | 2015-09-06 12:00 |  | 4d | 0d |  | 陈震 | 16h |  |
| 6 | 3.1.2 | 文档编写 | 1d? | 2015-09-06 13:00 | 2015-09-07 12:00 | 5 | 4d | 0d |  | 陈震 | 8h | 6日讨论一天 |
| 7 | 3.1.3 | 数据库结构讲解 | 1d? | 2015-09-07 13:00 | 2015-09-08 12:00 | 6 | 4d | 0d |  | 陈震 | 8h |  |
| 8 | 3.2 | **软件设计** | 11d? | 2015-09-01 13:00 | 2015-09-17 12:00 |  | 13d |  |  |  | 161.6h |  |
| 9 | 3.2.1 | 菜单定义 | 0.2d | 2015-09-02 15:24 | 2015-09-02 17:00 | 1 | 31d |  | finish no earlier than 2015-09-02 17:00 | 佟琳 | 1.6h |  |
| 10 | 3.2.2 | 原型开发 | 2d | 2015-09-02 08:00 | 2015-09-06 17:00 |  | 4d | 0d | start no earlier than 2015-09-02 08:00 | 佟琳 | 16h | 9月6日中午完成，春花帮忙制作部分内容 |
| 11 | 3.2.3 | 定义手持终端需求及其文档 | 2d? | 2015-09-07 08:00 | 2015-09-08 17:00 | 10 | 4d | 0d |  |  |  |  |
| 12 | 3.2.4 | 架构设计及文档编写，其他人员根据数据库编写详细设计 | 3d? | 2015-09-01 13:00 | 2015-09-07 12:00 | 1 | 16.5d | 1d |  | 于元华 | 24h | 部分完成，主要时间用于讨论需求，开发规范，数据库设计文档。 |
| 13 | 3.2.5 | 基础框架整理规划(包括整理定义菜单，规划功能定义,接口框架及接口定义) | 3d? | 2015-09-01 13:00 | 2015-09-07 12:00 | 1 | 13d | 1d |  | 黄成元 | 24h | 同上 |
| 14 | 3.2.6 | 开发计划讲解 | 0.5d | 2015-09-01 13:00 | 2015-09-01 17:00 | 2 | 14.5d | 0d | start no earlier than 2015-09-01 08:00 | 董治国 | 4h |  |
| 15 | 3.2.7 | 开发规范讲解讨论 | 0.5d? | 2015-09-02 08:00 | 2015-09-02 12:00 | 14 | 14.5d | 0d |  | 董治国 | 4h |  |
| 16 | 3.2.8 | session共享架构测试 | 2d | 2015-09-08 13:00 | 2015-09-10 12:00 | 7 | 2.5d | 0d |  | 其他陈震; 小孔配合机器 | 48h | 实际开始需要等基础工作完成才可以。实际搭建环境需要一日。 |
| 17 | 3.2.9 | 手持终端接口定义 | 2d | 2015-09-10 13:00 | 2015-09-14 12:00 | 11, 16 | 4d | 0d |  | 董治国 | 16h | 11日之前已经完成一版，11日需求讨论后，12日又修改一版。14日尚在继续修订中…. |
| 18 | 3.2.10 | 外接口压力测试 | 3d | 2015-09-14 13:00 | 2015-09-17 12:00 | 17 | 11d |  |  | 董治国 | 24h |  |
| 19 | 4 | **开发** | 35d? | 2015-08-28 08:00 | 2015-10-23 17:00 |  | 0d |  |  |  | 632h |  |
| 20 | 4.1 | **数据维护** | 3.5d? | 2015-09-08 13:00 | 2015-09-11 17:00 |  | 12d |  |  |  | 52h |  |
| 21 | 4.1.1 | **行政区域** | 1d? | 2015-09-08 13:00 | 2015-09-09 12:00 |  | 4d |  |  |  | 16h |  |
| 22 | 4.1.1.1 | 数据初始化脚本整理及初始化 | 1d? | 2015-09-08 13:00 | 2015-09-09 12:00 | 7 | 9d | 0d |  | 陈震 | 8h |  |
| 23 | 4.1.1.2 | 界面开发 | 1d? | 2015-09-08 13:00 | 2015-09-09 12:00 | 7 | 4d | 0d |  | 王景隆 | 8h |  |
| 24 | 4.1.2 | **部门管理** | 2d? | 2015-09-08 13:00 | 2015-09-10 12:00 |  | 15.5d |  |  |  | 16h |  |
| 25 | 4.1.2.1 | 新增部门及游戏代销费 | 1d? | 2015-09-08 13:00 | 2015-09-09 12:00 | 7, 12 | 15.5d | 0d |  | 于元华 | 8h | 授权移植到资金管理 |
| 26 | 4.1.2.2 | 部门查询列表 | 0.5d? | 2015-09-09 13:00 | 2015-09-09 17:00 | 25 | 15.5d | 0d |  | 于元华 | 4h |  |
| 27 | 4.1.2.3 | 修改 | 0.25d? | 2015-09-10 08:00 | 2015-09-10 10:00 | 26 | 15.5d | 0d |  | 于元华 | 2h |  |
| 28 | 4.1.2.4 | 删除 | 0.25d? | 2015-09-10 10:00 | 2015-09-10 12:00 | 27 | 15.5d | 0d |  | 于元华 | 2h |  |

| ID | WBS | Task | Duration | Start | Finish | Predecessors | Total slack | Free slack | Resources | Work | Text1 |
| --- | --- | --- | --- | --- | --- | --- | --- | --- | --- | --- | --- |
| 29 | 4.1.3 | **站点管理** | 2.5d? | 2015-09-09 13:00 | 2015-09-11 17:00 |  | 4d |  |  | 20h |  |
| 30 | 4.1.3.1 | 添加站点信息 | 1d? | 2015-09-09 13:00 | 2015-09-10 12:00 | 23 | 4d | 0d | 王景隆 | 8h |  |
| 31 | 4.1.3.2 | 站点列表查询 | 0.5d? | 2015-09-10 13:00 | 2015-09-10 17:00 | 30 | 4d | 0d | 王景隆 | 4h |  |
| 32 | 4.1.3.3 | 站点修改，删除 | 1d? | 2015-09-11 08:00 | 2015-09-11 17:00 | 31 | 4d | 0d | 王景隆 | 8h |  |
| 33 | 4.2 | **系统管理** | 3.5d? | 2015-09-08 13:00 | 2015-09-11 17:00 |  | 8.5d |  |  | 28h |  |
| 34 | 4.2.1 | **角色管理** | 2d? | 2015-09-08 13:00 | 2015-09-10 12:00 |  | 8.5d |  |  | 16h |  |
| 35 | 4.2.1.1 | 添加修改删除列表（从oms移植） | 1d? | 2015-09-08 13:00 | 2015-09-09 12:00 | 7 | 3.5d | 0d | 贾海新 | 8h |  |
| 36 | 4.2.1.2 | 角色授权 | 0.5d? | 2015-09-09 13:00 | 2015-09-09 17:00 | 35 | 8.5d | 0d | 贾海新 | 4h |  |
| 37 | 4.2.1.3 | 用户角色 | 0.5d? | 2015-09-10 08:00 | 2015-09-10 12:00 | 36 | 8.5d | 0d | 贾海新 | 4h |  |
| 38 | 4.2.2 | **用户管理** | 1.5d? | 2015-09-10 13:00 | 2015-09-11 17:00 |  | 8.5d |  |  | 12h |  |
| 39 | 4.2.2.1 | 新增用户 | 0.5d? | 2015-09-10 13:00 | 2015-09-10 17:00 | 37 | 3.5d | 0d | 贾海新 | 4h |  |
| 40 | 4.2.2.2 | 用户列表 | 0.5d? | 2015-09-11 08:00 | 2015-09-11 12:00 | 39 | 3.5d | 0d | 贾海新 | 4h |  |
| 41 | 4.2.2.3 | 删除及其他状态变化 | 0.5d? | 2015-09-11 13:00 | 2015-09-11 17:00 | 40 | 3.5d | 0d | 贾海新 | 4h |  |
| 42 | 4.3 | **订单管理** | 6d? | 2015-09-08 13:00 | 2015-09-16 12:00 |  | 12d |  |  | 48h |  |
| 43 | 4.3.1 | 调拨单申请 | 1d? | 2015-09-08 13:00 | 2015-09-09 12:00 | 7, 13 | 12d | 0d | 黄成元 | 8h |  |
| 44 | 4.3.2 | 调拨单查询 | 0.5d? | 2015-09-09 13:00 | 2015-09-09 17:00 | 43 | 12d | 0d | 黄成元 | 4h |  |
| 45 | 4.3.3 | 调拨单查询审批 | 0.5d? | 2015-09-10 08:00 | 2015-09-10 12:00 | 44 | 12d | 0d | 黄成元 | 4h |  |
| 46 | 4.3.4 | 订单申请 | 1d? | 2015-09-10 13:00 | 2015-09-11 12:00 | 45 | 12d | 0d | 黄成元 | 8h |  |
| 47 | 4.3.5 | 订单查询及详情 | 1d? | 2015-09-11 13:00 | 2015-09-14 12:00 | 46 | 12d | 0d | 黄成元 | 8h |  |
| 48 | 4.3.6 | 新增出货单 | 1d? | 2015-09-14 13:00 | 2015-09-15 12:00 | 47 | 12d | 0d | 黄成元 | 8h |  |
| 49 | 4.3.7 | 出货单查询 | 0.5d? | 2015-09-15 13:00 | 2015-09-15 17:00 | 48 | 12d | 0d | 黄成元 | 4h |  |
| 50 | 4.3.8 | 出货单详情 | 0.5d? | 2015-09-16 08:00 | 2015-09-16 12:00 | 49 | 12d | 0d | 黄成元 | 4h |  |
| 51 | 4.4 | **物品库存** | 9d? | 2015-09-08 13:00 | 2015-09-21 12:00 |  | 14.5d |  |  | 72h |  |
| 52 | 4.4.1 | 类别管理(查询，新增，修改，删除) | 3d | 2015-09-08 13:00 | 2015-09-11 12:00 | 7 | 2d | 0d | 王清响 | 24h | 原计划3天，新入手，比实际情况算上加班14日估计初步完成。 |
| 53 | 4.4.2 | 入库（列表，入库单新增） | 2d? | 2015-09-11 13:00 | 2015-09-15 12:00 | 52 | 14.5d | 0d | 王清响 | 16h |  |
| 54 | 4.4.3 | 出库 | 2d? | 2015-09-15 13:00 | 2015-09-17 12:00 | 53 | 14.5d | 0d | 王清响 | 16h |  |
| 55 | 4.4.4 | 盘点,查询，作废 | 2d? | 2015-09-17 13:00 | 2015-09-21 12:00 | 54 | 2d | 0d | 王清响 | 16h |  |

| ID | WBS | Task | Duration | Start | Finish | Predecessors | Total slack | Free slack | Resources | Work | Text1 |
| --- | --- | --- | --- | --- | --- | --- | --- | --- | --- | --- | --- |
| 56 | 4.5 | **彩票库存** | 11d? | 2015-09-09 13:00 | 2015-09-24 12:00 |  | 14.5d |  |  | 156h |  |
| 57 | 4.5.1 | **方案管理** | 3d? | 2015-09-14 08:00 | 2015-09-16 17:00 |  | 4d |  |  | 24h |  |
| 58 | 4.5.1.1 | 添加方案，修改，删除，查询列表 | 1d? | 2015-09-14 08:00 | 2015-09-14 17:00 | 32 | 4d | 0d | 王景隆 | 8h |  |
| 59 | 4.5.1.2 | 导入批次数据 | 2d? | 2015-09-15 08:00 | 2015-09-16 17:00 | 58 | 4d | 0d | 王景隆 | 16h |  |
| 60 | 4.5.2 | 仓库管理(增删改查) | 1d? | 2015-09-21 13:00 | 2015-09-22 12:00 | 55 | 2.5d |  | 王清响 | 8h | 清响主动要求先把仓库管理做了。 |
| 61 | 4.5.3 | **入库管理** | 4d? | 2015-09-09 13:00 | 2015-09-15 12:00 |  | 16.5d |  |  | 32h |  |
| 62 | 4.5.3.1 | 批次入库 | 1d? | 2015-09-10 13:00 | 2015-09-11 12:00 | 28 | 15.5d | 0d | 于元华 | 8h | 15日尚在执行中；遇到界面上的困难；严重滞后 |
| 63 | 4.5.3.2 | 入库单查询 | 0.5d? | 2015-09-11 13:00 | 2015-09-11 17:00 | 62 | 15.5d | 0d | 于元华 | 4h |  |
| 64 | 4.5.3.3 | 调拨入库,退货入库 | 1d? | 2015-09-14 08:00 | 2015-09-14 17:00 | 63 | 15.5d | 0d | 于元华 | 8h | 18日调拨入库，等待退货入库 |
| 65 | 4.5.3.4 | 入库单详情 | 0.5d | 2015-09-15 08:00 | 2015-09-15 12:00 | 64 | 15.5d | 0d | 于元华 | 4h |  |
| 66 | 4.5.3.5 | 入库存储过程 | 1d? | 2015-09-09 13:00 | 2015-09-10 12:00 | 22 | 6.5d | 0d | 陈震 | 8h |  |
| 67 | 4.5.4 | **出库管理** | 7d? | 2015-09-10 13:00 | 2015-09-21 12:00 |  | 18.5d |  |  | 48h |  |
| 68 | 4.5.4.1 | 调拨出库 | 1.5d? | 2015-09-15 13:00 | 2015-09-16 17:00 | 65 | 15.5d | 0d | 于元华 | 12h |  |
| 69 | 4.5.4.2 | 订单出库 | 1.5d? | 2015-09-17 08:00 | 2015-09-18 12:00 | 68 | 15.5d | 0d | 于元华 | 12h |  |
| 70 | 4.5.4.3 | 出库查询 | 1d? | 2015-09-18 13:00 | 2015-09-21 12:00 | 69 | 15.5d | 0d | 于元华 | 8h |  |
| 71 | 4.5.4.4 | 出库存储过程 | 2d? | 2015-09-10 13:00 | 2015-09-14 12:00 | 66 | 4.5d | 0d | 陈震 | 16h |  |
| 72 | 4.5.5 | **库存盘点** | 3d? | 2015-09-21 13:00 | 2015-09-24 12:00 |  | 15.5d |  |  | 24h |  |
| 73 | 4.5.5.1 | 库存查询 | 0.5d? | 2015-09-21 13:00 | 2015-09-21 17:00 | 70 | 15.5d | 0d | 于元华 | 4h |  |
| 74 | 4.5.5.2 | 盘点查询 | 0.5d? | 2015-09-22 08:00 | 2015-09-22 12:00 | 73 | 15.5d | 0d | 于元华 | 4h |  |
| 75 | 4.5.5.3 | 盘点 | 1d? | 2015-09-22 13:00 | 2015-09-23 12:00 | 74 | 15.5d | 0d | 于元华 | 8h |  |
| 76 | 4.5.5.4 | 新增盘点及盘点处理 | 1d? | 2015-09-23 13:00 | 2015-09-24 12:00 | 75 | 15.5d | 0d | 于元华 | 8h |  |
| 77 | 4.5.6 | 物流信息查询 | 1d? | 2015-09-17 08:00 | 2015-09-17 17:00 | 59 | 4d | 0d | 王景隆 | 8h | 待测试 |
| 78 | 4.5.7 | **批次终结** | 4d? | 2015-09-14 13:00 | 2015-09-18 12:00 |  | 3.5d |  |  | 12h |  |
| 79 | 4.5.7.1 | 界面列表 | 0.5d? | 2015-09-18 08:00 | 2015-09-18 12:00 | 77 | 4d | 0d | 王景隆 | 4h |  |
| 80 | 4.5.7.2 | 终结存储过程 | 1d? | 2015-09-14 13:00 | 2015-09-15 12:00 | 71 | 6.5d | 0d | 陈震 | 8h | 待测试 |

| ID | WBS | Task | Duration | Start | Finish | Predecessors | Total slack | Free slack | Constraint | Resources | Work | Text1 |
| --- | --- | --- | --- | --- | --- | --- | --- | --- | --- | --- | --- | --- |
| 81 | 4.6 | **兑奖管理** | 2.5d? | 2015-09-18 13:00 | 2015-09-22 17:00 |  | 12d |  |  |  | 20h |  |
| 82 | 4.6.1 | 中心兑奖 | 1.5d? | 2015-09-18 13:00 | 2015-09-21 17:00 | 79 | 4d | 0d |  | 王景隆 | 12h |  |
| 83 | 4.6.2 | 手工兑奖 | 0.5d? | 2015-09-22 08:00 | 2015-09-22 12:00 | 82 | 4d | 0d |  | 王景隆 | 4h |  |
| 84 | 4.6.3 | 兑奖记录查询 | 0.5d | 2015-09-22 13:00 | 2015-09-22 17:00 | 83 | 4d | 0d |  | 王景隆 | 4h |  |
| 85 | 4.7 | **资金结算** | 16.5d? | 2015-09-14 08:00 | 2015-10-13 12:00 |  | 0.5d |  |  |  | 32h |  |
| 86 | 4.7.1 | 站点账户设置 | 0.5d? | 2015-09-14 08:00 | 2015-09-14 12:00 | 41 | 3d | 0d |  | 贾海新 | 4h |  |
| 87 | 4.7.2 | 代销商站点管理 | 0.5d? | 2015-09-14 13:00 | 2015-09-14 17:00 | 86 | 3d | 0d |  | 贾海新 | 4h |  |
| 88 | 4.7.3 | 市场管理员账户管理 | 0.5d? | 2015-09-15 08:00 | 2015-09-15 12:00 | 87 | 3d | 0d |  | 贾海新 | 4h |  |
| 89 | 4.7.4 | 还货管理 | 1d? | 2015-09-15 13:00 | 2015-09-16 12:00 | 88 | 14.5d |  |  | 贾海新 | 8h | 清响帮完成，待确认 |
| 90 | 4.7.5 | 提现申请，审批，查询 | 1d? | 2015-10-12 08:00 | 2015-10-12 17:00 |  | 8d | 0d | start no earlier than 2015-10-12 08:00 | 贾海新 | 8h |  |
| 91 | 4.7.6 | 市场专员缴款还款 | 0.5d? | 2015-10-13 08:00 | 2015-10-13 12:00 | 90 | 8d | 0d |  | 王清响 | 4h |  |
| 92 | 4.8 | **市场管理员账户管理(相关功能移动终端)** | 14.5d? | 2015-09-16 13:00 | 2015-10-13 17:00 |  | 8d |  |  |  | 28h |  |
| 93 | 4.8.1 | 还货申请 | 0.5d? | 2015-09-16 13:00 | 2015-09-16 17:00 | 50 | 12d | 0d |  | 黄成元 | 4h |  |
| 94 | 4.8.2 | 损毁登记 | 1d? | 2015-09-17 08:00 | 2015-09-17 17:00 | 93 | 12d | 0d |  | 黄成元 | 8h |  |
| 95 | 4.8.3 | 还款记录 | 0.5d? | 2015-09-18 08:00 | 2015-09-18 12:00 | 94 | 12d | 0d |  | 黄成元 | 4h |  |
| 96 | 4.8.4 | 库存查询 | 1d? | 2015-09-18 13:00 | 2015-09-21 12:00 | 95 | 12d | 0d |  | 黄成元 | 8h |  |
| 97 | 4.8.5 | 余额查询 | 0.5d | 2015-10-13 13:00 | 2015-10-13 17:00 | 91 | 8d |  |  | 贾海新 | 4h |  |
| 98 | 4.9 | **站点服务** | 3d? | 2015-09-23 08:00 | 2015-09-25 17:00 |  | 12d |  |  |  | 32h |  |
| 99 | 4.9.1 | 站点信息查询 | 1d? | 2015-09-23 08:00 | 2015-09-23 17:00 | 84 | 4d | 0d |  | 贾海新 | 8h |  |
| 100 | 4.9.2 | 站点交易查询 | 0.5d? | 2015-09-24 08:00 | 2015-09-24 12:00 | 99 | 4d | 0d |  | 王景隆 | 4h |  |
| 101 | 4.9.3 | 资金日结查询 | 0.5d? | 2015-09-24 13:00 | 2015-09-24 17:00 | 100 | 4d | 0d |  | 王景隆 | 4h |  |
| 102 | 4.9.4 | 站点提现申请、查询 | 1d? | 2015-09-25 08:00 | 2015-09-25 17:00 | 101 | 4d | 0d |  | 贾海新 | 8h |  |
| 103 | 4.9.5 | 退货查询 | 0.5d? | 2015-09-24 13:00 | 2015-09-24 17:00 | 76 | 15.5d | 0d |  | 于元华 | 4h |  |
| 104 | 4.9.6 | 站点入库记录查询 | 0.5d? | 2015-09-25 08:00 | 2015-09-25 12:00 | 103 | 15.5d |  |  | 于元华 | 4h |  |

| ID | WBS | Task | Duration | Start | Finish | Predecessors | Total slack | Free slack | Constraint | Resources | Work | Text1 |
| --- | --- | --- | --- | --- | --- | --- | --- | --- | --- | --- | --- | --- |
| 105 | 4.10 | **报表** | 35d? | 2015-08-28 08:00 | 2015-10-23 17:00 |  | 0d |  |  |  | 164h |  |
| 106 | 4.10.1 | 站点销售报表 | 0.5d? | 2015-09-21 13:00 | 2015-09-21 17:00 | 96 | 12d | 0d |  | 黄成元 | 4h |  |
| 107 | 4.10.2 | **部门销售报表** | 17d? | 2015-08-28 08:00 | 2015-09-22 17:00 |  | 13d |  |  |  | 16h |  |
| 108 | 4.10.2.1 | 界面展现，打印导出 | 1d? | 2015-09-22 08:00 | 2015-09-22 17:00 | 106 | 12d | 0d |  | 黄成元 | 8h |  |
| 109 | 4.10.2.2 | 存储过程 | 1d? | 2015-08-28 08:00 | 2015-08-28 17:00 |  | 17d | 0d |  | 陈震 | 8h |  |
| 110 | 4.10.3 | **兑奖报表** | 17d? | 2015-08-31 08:00 | 2015-09-23 17:00 |  | 14d |  |  |  | 16h |  |
| 111 | 4.10.3.1 | 界面展现，打印导出 | 1d? | 2015-09-23 08:00 | 2015-09-23 17:00 | 84 | 14d | 2d |  | 王景隆 | 8h |  |
| 112 | 4.10.3.2 | 存储过程 | 1d? | 2015-08-31 08:00 | 2015-08-31 17:00 | 109 | 17d | 0d |  | 陈震 | 8h |  |
| 113 | 4.10.4 | **库存报表** | 33d? | 2015-09-01 08:00 | 2015-10-23 17:00 |  | 0d |  |  |  | 24h |  |
| 114 | 4.10.4.1 | 界面展现，打印导出 | 1d? | 2015-09-22 13:00 | 2015-09-23 12:00 | 60 | 14.5d | 2.5d |  | 王清响 | 8h | c成元代写 |
| 115 | 4.10.4.2 | 存储过程 | 1d? | 2015-09-01 08:00 | 2015-09-01 17:00 | 112 | 29d | 17d |  | 陈震 | 8h |  |
| 116 | 4.10.4.3 | 遗留：损毁查询 | 1d? | 2015-10-23 08:00 | 2015-10-23 17:00 | 1 | 0d |  | start no earlier than 2015-10-23 08:00 | 王景隆 | 8h |  |
| 117 | 4.10.5 | 移动终端联合开发测试-其他任务协调 | 3d? | 2015-09-23 08:00 | 2015-09-25 17:00 | 108 | 12d | 0d |  | 黄成元 | 24h |  |
| 118 | 4.10.6 | 异动终端开发 | 10d? | 2015-09-14 13:00 | 2015-09-28 12:00 | 17 | 2.5d |  |  | 邵烈华及其他人员 | 80h |  |
| 119 | 5 | 集成发布 | 3d? | 2015-09-28 08:00 | 2015-09-30 17:00 | 117, 111, 114, 115, 102 | 12d |  |  |  |  |  |
